# Client Proposed Solution and Implementation Schedule

Schedule from MS Project, 2024-10-02 to 2026-09-28, scheduled back from the finish, costs in $.

## Calendars

- Standard: Mon-Fri 08:00-12:00, 13:00-17:00; Sat-Sun off.

## Resources

| Resource | Rate |
| --- | --- |
| Sponsor | 50 |
| Data Scientist | 100 |
| QA Engineer | 100 |
| Software Developer | 100 |
| PM1(Yanish Shahi) | 50 |
| PM2(Jasmeen Kaur) | 50 |
| PM3(Shivank Giri) | 50 |
| Training Specialist | 150 |
| Market Analyst | 150 |

## Schedule

| ID | WBS | Task | Duration | Start | Finish | Predecessors | Baseline start | Baseline finish | Baseline duration | Total slack | Free slack | Constraint | Resources | Work | Cost | Baseline cost |
| --- | --- | --- | --- | --- | --- | --- | --- | --- | --- | --- | --- | --- | --- | --- | --- | --- |
| 1 | 0 | **Client Proposed Solution and Implementation Schedule** | 519d | 2024-10-02 | 2026-09-28 |  | 2024-10-02 | 2026-09-28 | 519d | 0d |  | as late as possible |  | 6712h | 660,800 | 660,800 |
| 2 | 1 | **Market Research** | 52d | 2024-10-02 | 2024-12-12 |  | 2024-10-02 | 2024-12-12 | 52d | 0d |  | as late as possible |  | 648h | 55,600 | 55,600 |
| 3 | 1.1 | Research AI Tool for Learning Platforms | 10d | 2024-10-02 | 2024-10-15 |  | 2024-10-02 | 2024-10-15 | 10d | 0d |  | start no later than 2024-10-02 | PM1(Yanish Shahi); Data Scientist | 160h | 12,000 | 12,000 |
| 4 | 1.2 | Analyze Competitor AI Solutions | 15d | 2024-10-17 | 2024-11-06 | 3FS+1d | 2024-10-17 | 2024-11-06 | 15d | 2d | 0d |  | Market Analyst; PM3(Shivank Giri) | 240h | 24,000 | 24,000 |
| 5 | 1.3 | Client Data Analysis for AI needs | 8d | 2024-11-08 | 2024-11-19 | 4FS+1d | 2024-11-08 | 2024-11-19 | 8d | 2d | 0d |  | Data Scientist; PM2(Jasmeen Kaur) | 128h | 9,600 | 9,600 |
| 6 | 1.4 | Survey AI Market Trends in Education | 5d | 2024-11-21 | 2024-11-27 | 5FS+1d | 2024-11-21 | 2024-11-27 | 5d | 2d | 0d |  | Market Analyst | 40h | 6,000 | 6,000 |
| 7 | 1.5 | Draft AI research report for stakeholders | 10d | 2024-11-29 | 2024-12-12 | 6FS+1d | 2024-11-29 | 2024-12-12 | 10d | 2d | 0d |  | PM3(Shivank Giri) | 80h | 4,000 | 4,000 |
| 8 | 2 | **Data Collection and Validation** | 45d | 2024-12-16 | 2025-02-14 |  | 2024-12-16 | 2025-02-14 | 45d | 0d |  | as late as possible |  | 528h | 50,800 | 50,800 |
| 9 | 2.1 | Gather ACME's program data | 15d | 2024-12-16 | 2025-01-03 | 7FS+1d | 2024-12-16 | 2025-01-03 | 15d | 2d | 0d |  | Data Scientist; Software Developer | 240h | 24,000 | 24,000 |
| 10 | 2.2 | Data cleaning and preparation | 6d | 2025-01-07 | 2025-01-14 | 9FS+1d | 2025-01-07 | 2025-01-14 | 6d | 2d | 0d |  | Data Scientist | 48h | 4,800 | 4,800 |
| 11 | 2.3 | Validate data with key stakeholders | 5d | 2025-01-16 | 2025-01-22 | 10FS+1d | 2025-01-16 | 2025-01-22 | 5d | 2d | 0d |  | Data Scientist | 40h | 4,000 | 4,000 |
| 12 | 2.4 | Select key data attributes for AI modesl | 10d | 2025-01-24 | 2025-02-06 | 11FS+1d | 2025-01-24 | 2025-02-06 | 10d | 2d | 0d |  | Data Scientist; Software Developer | 160h | 16,000 | 16,000 |
| 13 | 2.5 | Document data collection and validation process | 5d | 2025-02-10 | 2025-02-14 | 12FS+1d | 2025-02-10 | 2025-02-14 | 5d | 2d | 0d |  | PM2(Jasmeen Kaur) | 40h | 2,000 | 2,000 |
| 14 | 3 | **Integration and Design** | 33d | 2025-02-18 | 2025-04-03 |  | 2025-02-18 | 2025-04-03 | 33d | 0d |  | as late as possible |  | 520h | 48,000 | 48,000 |
| 15 | 3.1 | Design AI integration framework | 10d | 2025-02-18 | 2025-03-03 | 13FS+1d | 2025-02-18 | 2025-03-03 | 10d | 2d | 0d |  | Data Scientist; Software Developer | 160h | 16,000 | 16,000 |
| 16 | 3.2 | create user interface design for AI features | 5d | 2025-03-05 | 2025-03-11 | 15FS+1d | 2025-03-05 | 2025-03-11 | 5d | 2d | 0d |  | Software Developer | 40h | 4,000 | 4,000 |
| 17 | 3.3 | Develop data flow diagrams for AI tools | 10d | 2025-03-13 | 2025-03-26 | 16FS+1d | 2025-03-13 | 2025-03-26 | 10d | 2d | 0d |  | Data Scientist; Software Developer | 160h | 16,000 | 16,000 |
| 18 | 3.4 | Stakeholder approval for AI integration design | 5d | 2025-03-28 | 2025-04-03 | 17FS+1d | 2025-03-28 | 2025-04-03 | 5d | 2d | 0d |  | Data Scientist; PM3(Shivank Giri); Software Developer; Sponsor | 160h | 12,000 | 12,000 |
| 19 | 4 | **AI Model development** | 53d | 2025-04-07 | 2025-06-18 |  | 2025-04-07 | 2025-06-18 | 53d | 0d |  | as late as possible |  | 472h | 47,200 | 47,200 |
| 20 | 4.1 | Develop AI algorithms for personalized learning | 10d | 2025-04-07 | 2025-04-18 | 18FS+1d | 2025-04-07 | 2025-04-18 | 10d | 2d | 0d |  | Data Scientist; Software Developer | 160h | 16,000 | 16,000 |
| 21 | 4.2 | Train AI Models with ACME's Data | 15d | 2025-04-22 | 2025-05-12 | 20FS+1d | 2025-04-22 | 2025-05-12 | 15d | 2d | 0d |  | Data Scientist | 120h | 12,000 | 12,000 |
| 22 | 4.3 | Develop machine learning pipelines | 4d | 2025-05-14 | 2025-05-19 | 21FS+1d | 2025-05-14 | 2025-05-19 | 4d | 2d | 0d |  | Data Scientist | 32h | 3,200 | 3,200 |
| 23 | 4.4 | Test AI Models in sandbox environment | 10d | 2025-05-21 | 2025-06-03 | 22FS+1d | 2025-05-21 | 2025-06-03 | 10d | 2d | 0d |  | Data Scientist | 80h | 8,000 | 8,000 |
| 24 | 4.5 | Optimize AI Models for scalibility | 10d | 2025-06-05 | 2025-06-18 | 23FS+1d | 2025-06-05 | 2025-06-18 | 10d | 2d | 0d |  | Data Scientist | 80h | 8,000 | 8,000 |

Notes:
- 1: Group_26 Client Proposed Solution and Implementation Schedule.mpp

| ID | WBS | Task | Duration | Start | Finish | Predecessors | Baseline start | Baseline finish | Baseline duration | Total slack | Free slack | Constraint | Resources | Work | Cost | Baseline cost |
| --- | --- | --- | --- | --- | --- | --- | --- | --- | --- | --- | --- | --- | --- | --- | --- | --- |
| 25 | 5 | **Platform development and Ai integration** | 59d | 2025-06-20 | 2025-09-10 |  | 2025-06-20 | 2025-09-10 | 59d | 0d |  | as late as possible |  | 880h | 88,000 | 88,000 |
| 26 | 5.1 | Develop AI features in platform | 15d | 2025-06-20 | 2025-07-10 | 24FS+1d | 2025-06-20 | 2025-07-10 | 15d | 2d | 0d |  | Data Scientist; Software Developer | 240h | 24,000 | 24,000 |
| 27 | 5.2 | Configure systems for AI Integration | 10d | 2025-07-14 | 2025-07-25 | 26FS+1d | 2025-07-14 | 2025-07-25 | 10d | 2d | 0d |  | Data Scientist; Software Developer | 160h | 16,000 | 16,000 |
| 28 | 5.3 | Test AI integration with existing systems | 5d | 2025-07-29 | 2025-08-04 | 27FS+1d | 2025-07-29 | 2025-08-04 | 5d | 2d | 0d |  | Data Scientist; Software Developer | 80h | 8,000 | 8,000 |
| 29 | 5.4 | Optimize system performance | 10d | 2025-08-06 | 2025-08-19 | 28FS+1d | 2025-08-06 | 2025-08-19 | 10d | 2d | 0d |  | Data Scientist; Software Developer | 160h | 16,000 | 16,000 |
| 30 | 5.5 | Obtain stakeholder approval for AI integration | 15d | 2025-08-21 | 2025-09-10 | 29FS+1d | 2025-08-21 | 2025-09-10 | 15d | 2d | 0d |  | Data Scientist; Software Developer | 240h | 24,000 | 24,000 |
| 31 | 6 | **AI testing and quality assurance** | 61d | 2025-09-12 | 2025-12-05 |  | 2025-09-12 | 2025-12-05 | 61d | 0d |  | as late as possible |  | 1368h | 159,600 | 159,600 |
| 32 | 6.1 | Create AI test cases | 10d | 2025-09-12 | 2025-09-25 | 30FS+1d | 2025-09-12 | 2025-09-25 | 10d | 2d | 0d |  | Data Scientist; QA Engineer; Training Specialist | 240h | 28,000 | 28,000 |
| 33 | 6.2 | Run Functional tests on AI tools | 15d | 2025-09-29 | 2025-10-17 | 32FS+1d | 2025-09-29 | 2025-10-17 | 15d | 2d | 0d |  | Data Scientist; QA Engineer; Training Specialist | 360h | 42,000 | 42,000 |
| 34 | 6.3 | Identify bugs and issues | 7d | 2025-10-21 | 2025-10-29 | 33FS+1d | 2025-10-21 | 2025-10-29 | 7d | 2d | 0d |  | Data Scientist; QA Engineer; Training Specialist | 168h | 19,600 | 19,600 |
| 35 | 6.4 | Fix bugs and optimize AI tools | 15d | 2025-10-31 | 2025-11-20 | 34FS+1d | 2025-10-31 | 2025-11-20 | 15d | 2d | 0d |  | Data Scientist; QA Engineer; Training Specialist | 360h | 42,000 | 42,000 |
| 36 | 6.5 | Stakeholder review after QA testing | 10d | 2025-11-24 | 2025-12-05 | 35FS+1d | 2025-11-24 | 2025-12-05 | 10d | 2d | 0d |  | Data Scientist; QA Engineer; Training Specialist | 240h | 28,000 | 28,000 |
| 37 | 7 | **Staff training and client onboarding** | 59d | 2025-12-09 | 2026-02-27 |  | 2025-12-09 | 2026-02-27 | 59d | 0d |  | as late as possible |  | 760h | 102,000 | 102,000 |
| 38 | 7.1 | Develop training materials for AI use | 15d | 2025-12-09 | 2025-12-29 | 36FS+1d | 2025-12-09 | 2025-12-29 | 15d | 2d | 0d |  | Market Analyst; Training Specialist | 240h | 36,000 | 36,000 |
| 39 | 7.2 | Conduct training for staff | 10d | 2025-12-31 | 2026-01-13 | 38FS+1d | 2025-12-31 | 2026-01-13 | 10d | 2d | 0d |  | Training Specialist | 80h | 12,000 | 12,000 |
| 40 | 7.3 | Client onboarding sessions | 5d | 2026-01-15 | 2026-01-21 | 39FS+1d | 2026-01-15 | 2026-01-21 | 5d | 2d | 0d |  | Training Specialist | 40h | 6,000 | 6,000 |
| 41 | 7.4 | AI usage feedback from staff and client | 10d | 2026-01-23 | 2026-02-05 | 40FS+1d | 2026-01-23 | 2026-02-05 | 10d | 2d | 0d |  | Market Analyst; Training Specialist | 160h | 24,000 | 24,000 |
| 42 | 7.5 | Refine training materials based on feedback | 15d | 2026-02-09 | 2026-02-27 | 41FS+1d | 2026-02-09 | 2026-02-27 | 15d | 2d | 0d |  | PM3(Shivank Giri); Training Specialist | 240h | 24,000 | 24,000 |
| 43 | 8 | **Deployment of AI Features** | 45d | 2026-03-03 | 2026-05-04 |  | 2026-03-03 | 2026-05-04 | 45d | 0d |  | as late as possible |  | 656h | 65,600 | 65,600 |
| 44 | 8.1 | Deploy AI tools | 10d | 2026-03-03 | 2026-03-16 | 42FS+1d | 2026-03-03 | 2026-03-16 | 10d | 2d | 0d |  | Data Scientist; Software Developer | 160h | 16,000 | 16,000 |
| 45 | 8.2 | Monitor AI tool deployment | 6d | 2026-03-18 | 2026-03-25 | 44FS+1d | 2026-03-18 | 2026-03-25 | 6d | 2d | 0d |  | Data Scientist; Software Developer | 96h | 9,600 | 9,600 |
| 46 | 8.3 | Collect initial usage data | 10d | 2026-03-27 | 2026-04-09 | 45FS+1d | 2026-03-27 | 2026-04-09 | 10d | 2d | 0d |  | Data Scientist; Software Developer | 160h | 16,000 | 16,000 |
| 47 | 8.4 | Analyze deployment effectiveness | 5d | 2026-04-13 | 2026-04-17 | 46FS+1d | 2026-04-13 | 2026-04-17 | 5d | 2d | 0d |  | Data Scientist; Software Developer | 80h | 8,000 | 8,000 |
| 48 | 8.5 | Stakeholder Approval for Full Deployment | 10d | 2026-04-21 | 2026-05-04 | 47FS+1d | 2026-04-21 | 2026-05-04 | 10d | 2d | 0d |  | Data Scientist; Software Developer | 160h | 16,000 | 16,000 |

| ID | WBS | Task | Duration | Start | Finish | Predecessors | Baseline start | Baseline finish | Baseline duration | Total slack | Free slack | Constraint | Resources | Work | Cost | Baseline cost |
| --- | --- | --- | --- | --- | --- | --- | --- | --- | --- | --- | --- | --- | --- | --- | --- | --- |
| 49 | 9 | **Monitor and Evaluation** | 59d | 2026-05-06 | 2026-07-27 |  | 2026-05-06 | 2026-07-27 | 59d | 0d |  | as late as possible |  | 560h | 28,000 | 28,000 |
| 50 | 9.1 | Establish Monitoring Framework | 15d | 2026-05-06 | 2026-05-26 | 48FS+1d | 2026-05-06 | 2026-05-26 | 15d | 2d | 0d |  | PM1(Yanish Shahi) | 120h | 6,000 | 6,000 |
| 51 | 9.2 | Collect data on learning outcomes | 10d | 2026-05-28 | 2026-06-10 | 50FS+1d | 2026-05-28 | 2026-06-10 | 10d | 2d | 0d |  | PM1(Yanish Shahi); PM2(Jasmeen Kaur) | 160h | 8,000 | 8,000 |
| 52 | 9.3 | Conduct feedback sessions with users | 5d | 2026-06-12 | 2026-06-18 | 51FS+1d | 2026-06-12 | 2026-06-18 | 5d | 2d | 0d |  | PM2(Jasmeen Kaur); PM3(Shivank Giri) | 80h | 4,000 | 4,000 |
| 53 | 9.4 | Evaluate Ai tool performance | 10d | 2026-06-22 | 2026-07-03 | 52FS+1d | 2026-06-22 | 2026-07-03 | 10d | 2d | 0d |  | PM3(Shivank Giri) | 80h | 4,000 | 4,000 |
| 54 | 9.5 | Report findings to stakeholders | 15d | 2026-07-07 | 2026-07-27 | 53FS+1d | 2026-07-07 | 2026-07-27 | 15d | 2d | 0d |  | PM2(Jasmeen Kaur) | 120h | 6,000 | 6,000 |
| 55 | 10 | **Project closure and documentation** | 44d | 2026-07-29 | 2026-09-28 |  | 2026-07-29 | 2026-09-28 | 44d | 0d |  | as late as possible |  | 320h | 16,000 | 16,000 |
| 56 | 10.1 | Compile project documentation | 10d | 2026-07-29 | 2026-08-11 | 54FS+1d | 2026-07-29 | 2026-08-11 | 10d | 2d | 0d |  | PM1(Yanish Shahi) | 80h | 4,000 | 4,000 |
| 57 | 10.2 | Conduct project review meeting | 5d | 2026-08-13 | 2026-08-19 | 56FS+1d | 2026-08-13 | 2026-08-19 | 5d | 2d | 0d |  | PM2(Jasmeen Kaur) | 40h | 2,000 | 2,000 |
| 58 | 10.3 | Prepare final project report | 10d | 2026-08-21 | 2026-09-03 | 57FS+1d | 2026-08-21 | 2026-09-03 | 10d | 2d | 0d |  | PM3(Shivank Giri) | 80h | 4,000 | 4,000 |
| 59 | 10.4 | Obtain sign-off from stakeholders | 5d | 2026-09-07 | 2026-09-11 | 58FS+1d | 2026-09-07 | 2026-09-11 | 5d | 2d | 0d |  | PM3(Shivank Giri) | 40h | 2,000 | 2,000 |
| 60 | 10.5 | Archive project materials | 10d | 2026-09-15 | 2026-09-28 | 59FS+1d | 2026-09-15 | 2026-09-28 | 10d | 2d |  |  | PM2(Jasmeen Kaur) | 80h | 4,000 | 4,000 |
